How a schedule from MS Project changed from version to version. A marks actual dates.

## Version 1 (saved 2019-01-14)

| ID | WBS | Task | Duration | Start | Finish | Predecessors | Complete | Total float | Constraint |
| --- | --- | --- | --- | --- | --- | --- | --- | --- | --- |
| 1 | 1 | **项目启动** | 50h | 2018-09-20 20:00 A | 2018-10-08 18:00 |  | 100% |  |  |
| 2 |  | 小组建立 | 1h | 2018-09-20 20:00 A | 2018-09-20 21:00 A |  | 100% |  |  |
| 3 |  | 环境搭建 | 11h | 2018-09-21 20:00 A | 2018-09-25 21:00 A | 231 | 100% |  |  |
| 4 |  | 项目确认 | 1h | 2018-09-26 20:00 A | 2018-09-26 21:00 A | 231 | 100% |  | finish no earlier than 2018-09-26 21:00 |
| 5 |  | 配置管理 | 3h | 2018-09-29 20:00 A | 2018-09-30 16:00 A | 4, 3 | 100% |  |  |
| 6 |  | 建立小组分支 | 1d | 2018-10-05 20:00 A | 2018-10-05 21:00 A | 5 | 100% |  |  |
| 7 |  | 配置管理规范 | 2h | 2018-10-07 20:00 A | 2018-10-07 22:00 A | 6 | 100% |  |  |
| 8 | 2 | **项目计划** | 103h | 2018-09-28 20:00 A | 2018-11-24 17:00 |  | 97% |  |  |
| 9 | 2.1 | **需求工程项目计划v0.1.0** | 100d | 2018-09-28 20:00 A | 2018-11-23 21:00 | 232 | 89% | 0d |  |
| 10 |  | 工作分解初步(wbs) | 3h | 2018-09-28 20:00 A | 2018-09-29 16:00 A | 232 | 100% |  |  |
| 11 |  | 工作分解(wbs)修改 | 1h | 2018-10-31 16:00 A | 2018-10-31 17:00 A | 10 | 100% |  |  |
| 12 |  | 工作分解(wbs)修改(2) | 1h | 2018-11-10 20:00 A | 2018-11-10 21:00 A | 11 | 100% |  |  |
| 13 |  | 工作分解(wbs)修改(3) | 1h | 2018-11-23 20:00 A | 2018-11-23 21:00 A | 12 | 100% |  |  |
| 14 |  | 甘特图 | 3h | 2018-09-29 16:00 A | 2018-09-30 15:00 A | 232 | 100% |  |  |
| 15 |  | 成本管理计划 | 2h | 2018-09-28 20:00 A | 2018-09-29 15:00 A | 232 | 100% |  |  |
| 16 |  | 质量管理计划 | 1h | 2018-09-28 20:00 A | 2018-09-28 21:00 A | 232 | 100% |  |  |
| 17 |  | 沟通管理计划 | 1h | 2018-09-28 20:00 A | 2018-09-28 21:00 A | 232 | 100% |  |  |
| 18 |  | 风险管理计划 | 1h | 2018-09-28 20:00 A | 2018-09-28 21:00 A | 232 | 100% |  |  |
| 19 |  | 人力资源计划 | 1h | 2018-09-28 20:00 A | 2018-09-28 21:00 A | 232 | 100% |  |  |
| 20 |  | 文档整合 | 3h | 2018-09-28 21:00 A | 2018-09-29 17:00 | 232, 10, 14, 15, 16, 17, 18, 19 | 33% |  |  |
| 21 | 2.2 | **需求工程项目计划v0.2.0** | 1h | 2018-10-06 20:00 A | 2018-10-06 21:00 | 20, 234 | 100% |  |  |
| 22 |  | 修改第1，2，6章 | 1d | 2018-10-06 20:00 A | 2018-10-06 21:00 A | 20, 234 | 100% |  |  |
| 23 |  | 修改第7，8章 | 1d | 2018-10-06 20:00 A | 2018-10-06 21:00 A | 20, 234 | 100% |  |  |
| 24 |  | 修改第5章 | 1d | 2018-10-06 20:00 A | 2018-10-06 21:00 A | 20, 234 | 100% |  |  |
| 25 |  | 修改第3章 | 1d | 2018-10-06 20:00 A | 2018-10-06 21:00 A | 20, 234 | 100% |  |  |
| 26 |  | 修改第1，2，5章 | 1d | 2018-10-11 20:00 A | 2018-10-11 21:00 A | 20, 234 | 100% |  |  |
| 27 |  | 增加页眉页脚 | 1d | 2018-10-14 20:00 A | 2018-10-14 21:00 A | 20, 234 | 100% |  |  |
| 28 |  | 需求工程项目计划整合v0.2.0 | 23d | 2018-10-20 20:00 A | 2018-10-20 21:00 | 20, 22, 23, 24, 25, 26, 27 | 100% |  |  |
| 29 | 2.3 | **需求工程项目计划v0.3.0** | 41d | 2018-11-02 20:00 A | 2018-11-24 15:00 A |  | 100% |  |  |
| 30 |  | 需求工程计划第七章风险细化修改 | 1h | 2018-11-02 20:00 A | 2018-11-02 21:00 A | 28 | 100% |  |  |
| 31 |  | 需求工程计划第六章沟通管理计划修改 | 1h | 2018-11-02 20:00 A | 2018-11-02 21:00 A | 28 | 100% |  |  |
| 32 |  | 需求工程计划第四章成本管理计划修改 | 1h | 2018-11-02 20:00 A | 2018-11-02 21:00 A | 28 | 100% |  |  |
| 33 |  | 需求工程计划整合v0.2.2 | 1h | 2018-11-03 08:00 A | 2018-11-03 09:00 A | 30, 31, 32 | 100% |  |  |
| 34 |  | 需求工程项目计划修改v0.2.3 | 14h | 2018-11-08 14:00 A | 2018-11-08 15:00 | 33 | 100% |  |  |
| 35 |  | 需求工程项目计划修改v0.2.4 | 1h | 2018-11-15 14:00 A | 2018-11-15 15:00 A | 34 | 100% |  |  |
| 36 |  | 需求工程项目计划修改v0.3.0 | 1h | 2018-11-24 14:00 A | 2018-11-24 15:00 A | 35 | 100% |  |  |
| 37 | 2.4 | **需求工程项目计划v1.1.1** | 15d | 2018-11-24 15:00 A | 2018-12-01 17:00 A |  | 100% |  |  |
| 38 |  | 需求工程项目计划修改v1.1.0 | 1d | 2018-11-24 15:00 A | 2018-11-24 16:00 A | 36 | 100% |  |  |
| 39 |  | 需求工程项目计划修改v1.1.1 | 1d | 2018-12-01 16:00 A | 2018-12-01 17:00 A | 38 | 100% |  |  |
| 40 | 2.5 | **甘特图v1.0.0** | 177d | 2018-10-11 20:00 A | 2019-01-13 16:00 A |  | 100% |  |  |
| 41 |  | 甘特图v0.0.1 | 1.5h | 2018-10-11 20:00 A | 2018-10-11 21:30 A | 14 | 100% |  |  |
| 42 |  | 甘特图v0.0.2 | 2h | 2018-10-14 20:00 A | 2018-10-15 21:00 A | 41 | 100% |  |  |
| 43 |  | 甘特图v0.0.3 | 2h | 2018-10-18 20:00 A | 2018-10-19 21:00 A | 42 | 100% |  |  |
| 44 |  | 甘特图v0.0.4 | 2h | 2018-10-21 20:00 A | 2018-10-22 21:00 A | 43 | 100% |  |  |
| 45 |  | 甘特图v0.1.0 | 5h | 2018-10-26 09:00 A | 2018-10-26 14:00 A | 44 | 100% |  |  |
| 46 |  | 甘特图v0.1.1 | 0h | 2018-10-31 18:00 A | 2018-10-31 20:00 A | 45 | 100% |  |  |
| 47 |  | 甘特图v0.1.2 | 3h | 2018-10-31 20:00 A | 2018-11-02 21:00 A | 46 | 100% |  |  |
| 48 |  | 甘特图v0.1.3 | 2h | 2018-11-12 20:00 A | 2018-11-13 21:00 A | 47 | 100% |  |  |
| 49 |  | 甘特图v0.1.4 | 2h | 2018-11-17 08:00 A | 2018-11-17 10:00 A | 48 | 100% |  |  |
| 50 |  | 甘特图v0.1.5 | 2h | 2018-11-26 14:00 A | 2018-11-26 16:00 A | 49 | 100% |  |  |
| 51 |  | 甘特图v0.1.6 | 2h | 2018-12-14 14:00 A | 2018-12-14 16:00 A | 50 | 100% |  |  |
| 52 |  | 甘特图v0.1.7 | 2h | 2018-12-26 08:00 A | 2018-12-26 10:00 A | 51 | 100% |  |  |
| 53 |  | 甘特图v1.0.0 | 8h | 2019-01-13 08:00 A | 2019-01-13 16:00 A | 52 | 100% |  |  |
| 54 | 3 | **项目执行** | 202h | 2018-09-26 20:00 A | 2019-01-14 21:00 A |  | 100% |  |  |
| 55 | 3.1 | **需求获取** | 69h | 2018-09-27 17:00 A | 2018-11-03 18:00 |  | 100% |  |  |
| 56 | 3.1.1 | **系统搭建及分析** | 49d | 2018-09-27 17:00 A | 2018-10-23 21:00 A |  | 100% |  |  |
| 57 |  | 获取系统源代码 | 1d | 2018-09-27 17:00 A | 2018-09-27 18:00 A | 232 | 100% |  |  |
| 58 |  | 搭建系统 | 1d | 2018-10-09 09:00 A | 2018-10-09 10:00 A | 57, 20 | 100% |  |  |
| 59 |  | 搭建系统(系统bug修复） | 4d | 2018-10-10 13:30 A | 2018-10-10 17:30 A | 58 | 100% |  |  |
| 60 |  | 分析系统 | 3d | 2018-10-15 20:00 A | 2018-10-17 21:00 A | 59 | 100% |  |  |
| 61 |  | 分析系统(画出用例图） | 2d | 2018-10-22 20:00 A | 2018-10-23 21:00 A | 60 | 100% |  |  |
| 62 | 3.1.2 | **获取需求** | 13h | 2018-10-18 17:00 | 2018-10-21 18:00 |  | 100% |  |  |
| 63 |  | 定义愿景和范围v0.1.0 | 1h | 2018-11-03 08:00 A | 2018-11-03 09:00 A | 217, 218 | 100% |  |  |
| 64 |  | 定义愿景和范围v0.1.1 | 1h | 2018-11-12 08:00 A | 2018-11-12 09:00 A | 63 | 100% |  |  |
| 65 |  | 定义愿景和范围v0.1.2 | 1h | 2018-11-17 08:00 A | 2018-11-17 09:00 A | 64 | 100% |  |  |
| 66 |  | 定义愿景和范围v0.1.3 | 1h | 2018-12-05 08:00 A | 2018-12-05 09:00 A | 65 | 100% |  |  |
| 67 |  | 识别用户群 | 1h | 2018-11-15 08:00 A | 2018-11-15 09:00 A | 215 | 100% |  |  |
| 68 |  | 选择用户代表 | 1h | 2018-11-15 08:00 A | 2018-11-15 09:00 A | 215 | 100% |  |  |
| 69 |  | 识别用户需求 | 1h | 2018-11-15 08:00 A | 2018-11-15 09:00 A | 215 | 100% |  |  |
| 70 | 3.2 | **需求分析** | 78h | 2018-11-22 08:00 | 2018-12-27 21:00 |  | 100% |  |  |

| ID | WBS | Task | Duration | Start | Finish | Predecessors | Complete |
| --- | --- | --- | --- | --- | --- | --- | --- |
| 71 | 3.2.1 | **可行性分析报告** | 85d | 2018-10-13 15:00 A | 2018-11-25 21:00 A |  | 100% |
| 72 |  | 可行性分析报告v0.1.0 | 1d | 2018-10-13 15:00 A | 2018-10-13 16:00 A |  | 100% |
| 73 |  | 可行性分析报告v0.1.1 | 1d | 2018-11-20 14:00 A | 2018-11-20 15:00 A | 72 | 100% |
| 74 |  | 可行性分析报告v0.2.0 | 1d | 2018-10-20 15:00 A | 2018-10-20 16:00 A | 73 | 100% |
| 75 |  | 可行性分析报告v0.2.1 | 1d | 2018-10-26 20:00 A | 2018-10-26 21:00 A | 74 | 100% |
| 76 |  | 可行性分析报告v0.2.2 | 1d | 2018-11-03 14:00 A | 2018-11-03 15:00 A | 75 | 100% |
| 77 |  | 可行性分析报告v0.2.3 | 1d | 2018-11-15 15:00 A | 2018-11-15 16:00 A | 76 | 100% |
| 78 |  | 可行性分析报告v0.3.1 | 1h | 2018-11-25 20:00 A | 2018-11-25 21:00 A | 77 | 100% |
| 79 | 3.2.2 | **建立界面原型** | 33h | 2018-11-03 11:00 A | 2018-11-17 18:00 |  | 100% |
| 80 | 3.2.2.1 | **界面原型v0.1.x** | 13h | 2018-11-03 11:00 A | 2018-11-06 21:00 |  | 100% |
| 81 |  | 界面原型v0.1.0 | 2h | 2018-11-03 11:00 A | 2018-11-03 13:00 A | 63 | 100% |
| 82 |  | 界面原型v0.1.1 | 5h | 2018-11-10 15:00 A | 2018-11-11 16:00 A | 63, 81 | 100% |
| 83 |  | 界面原型v0.1.2 | 2h | 2018-11-15 20:00 A | 2018-11-16 21:00 A | 63, 82 | 100% |
| 84 |  | 界面原型v0.1.3 | 4h | 2018-11-17 08:00 A | 2018-11-17 12:00 A | 63, 83 | 100% |
| 85 | 3.2.2.2 | **界面原型v0.2.x** | 23h | 2018-11-18 13:00 A | 2018-11-30 21:00 |  | 100% |
| 86 |  | 界面原型-bbs | 5h | 2018-11-18 13:00 A | 2018-11-18 18:00 A | 84, 63 | 100% |
| 87 |  | 界面原型-实例管理 | 5h | 2018-11-18 13:00 A | 2018-11-18 18:00 A | 84, 63 | 100% |
| 88 |  | 界面原型-个人中心 | 5h | 2018-11-18 13:00 A | 2018-11-18 18:00 A | 84, 63 | 100% |
| 89 |  | 界面原型v0.2.1 | 3h | 2018-12-07 08:00 A | 2018-12-07 11:00 A | 63 | 100% |
| 90 |  | 界面原型v0.2.2 | 5h | 2018-12-16 08:00 A | 2018-12-16 13:00 A | 89, 63 | 100% |
| 91 | 3.2.2.3 | **界面原型v0.3.x** | 6h | 2018-12-17 13:00 A | 2018-12-17 19:00 |  | 100% |
| 92 |  | 界面原型v0.3.0 | 3h | 2018-12-17 13:00 A | 2018-12-17 16:00 A | 222, 90 | 100% |
| 93 |  | 界面原型v0.3.1 | 3h | 2018-12-18 17:00 A | 2018-12-18 20:00 A | 223, 92 | 100% |
| 94 | 3.2.2.4 | **界面原型v0.4.x** | 3h | 2018-12-21 20:00 | 2018-12-22 16:00 |  | 100% |
| 95 |  | 界面原型v0.4.0 | 3h | 2018-12-19 20:00 A | 2018-12-19 23:00 A | 224, 93 | 100% |
| 96 | 3.2.2.5 | **界面原型v0.5.x** | 3h | 2018-12-21 14:00 A | 2018-12-21 17:00 A |  | 100% |
| 97 |  | 界面原型v0.5.0 | 3h | 2018-12-21 14:00 A | 2018-12-21 17:00 A | 225, 95 | 100% |
| 98 | 3.2.2.6 | **界面原型v0.6.x** | 5h | 2018-12-21 20:00 A | 2018-12-22 18:00 |  | 100% |
| 99 |  | 界面原型v0.6.0 | 2h | 2018-12-21 20:00 A | 2018-12-22 15:00 A | 97 | 100% |
| 100 |  | 界面原型v0.6.1 | 3h | 2018-12-27 13:00 A | 2018-12-27 16:00 A | 99, 226 | 100% |
| 101 | 3.2.2.7 | **界面原型v0.7.x** | 3d | 2018-12-29 15:00 A | 2018-12-29 18:00 A |  | 100% |
| 102 |  | 界面原型v0.7.0 | 3h | 2018-12-29 15:00 A | 2018-12-29 18:00 A | 100, 227 | 100% |
| 103 | 3.2.2.8 | **界面原型v1.0.0** | 3h | 2019-01-04 15:00 A | 2019-01-04 18:00 A |  | 100% |
| 104 |  | 界面原型v1.0.0 | 3h | 2019-01-04 15:00 A | 2019-01-04 18:00 A | 102, 228 | 100% |
| 105 |  | 应用环境建模 | 1h | 2018-11-22 08:00 A | 2018-11-22 09:00 A | 55 | 100% |
| 106 |  | PBCLS的LOGO | 1h | 2018-11-03 10:00 A | 2018-11-03 11:00 A | 241 | 100% |
| 107 |  | 数据字典(初步) | 1h | 2018-11-30 20:00 A | 2018-11-30 21:00 A | 69 | 100% |
| 108 |  | 数据字典完善 | 1h | 2018-12-01 20:00 A | 2018-12-01 21:00 A | 107 | 100% |
| 109 |  | 数据库设计 | 1h | 2018-12-07 15:00 A | 2018-12-07 16:00 A | 107, 108, 69 | 100% |
| 110 |  | 分析可实现性 | 1h | 2018-11-03 15:00 A | 2018-11-03 16:00 A | 69 | 100% |
| 111 |  | 分析接口 | 1h | 2018-11-03 15:00 A | 2018-11-03 16:00 A | 69 | 100% |
| 112 |  | 将需求分配给子系统 | 1h | 2018-11-03 15:00 A | 2018-11-03 16:00 A | 69 | 100% |
| 113 | 3.3 | **需求规格说明** | 101h | 2018-11-29 08:00 | 2019-01-14 21:00 |  | 100% |
| 114 | 3.3.1 | **需求规格说明书v0.1.0** | 34d | 2018-12-01 16:00 A | 2018-12-19 17:00 A |  | 100% |
| 115 |  | 明确需求来源 | 1h | 2018-12-01 16:00 A | 2018-12-01 17:00 A | 109 | 100% |
| 116 |  | 为每个需求分配唯一标识 | 1h | 2018-12-01 16:00 A | 2018-12-01 17:00 A | 109 | 100% |
| 117 |  | 记录业务规则 | 1h | 2018-12-08 16:00 A | 2018-12-08 17:00 A | 109 | 100% |
| 118 |  | 记录非功能需求 | 1h | 2018-12-08 16:00 A | 2018-12-08 17:00 A | 109 | 100% |
| 119 |  | 管理员用户的顶层用例图顶层 | 1h | 2018-12-02 20:00 A | 2018-12-02 21:00 A | 108 | 100% |
| 120 |  | 教师用户的顶层用例图顶层 | 1h | 2018-12-02 20:00 A | 2018-12-02 21:00 A | 108 | 100% |
| 121 |  | 学生用户的顶层用例图顶层 | 1h | 2018-12-02 20:00 A | 2018-12-02 21:00 A | 108 | 100% |
| 122 |  | 案例拥有者用户的顶层用例图顶层 | 1h | 2018-12-02 20:00 A | 2018-12-02 21:00 A | 108 | 100% |
| 123 |  | 管理员用户的顶层用例图（分） | 2h | 2018-12-12 19:00 A | 2018-12-12 21:00 A | 119 | 100% |
| 124 |  | 教师用户的顶层用例图顶层(分） | 2h | 2018-12-12 19:00 A | 2018-12-12 21:00 A | 120 | 100% |
| 125 |  | 学生用户的顶层用例图顶层(分） | 2h | 2018-12-12 19:00 A | 2018-12-12 21:00 A | 121 | 100% |
| 126 |  | 案例拥有者用户的顶层用例图顶层(分） | 2h | 2018-12-12 19:00 A | 2018-12-12 21:00 A | 122 | 100% |
| 127 |  | 管理员用户的顶层用例图(交叉修改) | 3h | 2018-12-18 18:00 A | 2018-12-18 21:00 A | 123 | 100% |
| 128 |  | 教师用户的顶层用例图顶层(交叉修改） | 3h | 2018-12-18 18:00 A | 2018-12-18 21:00 A | 124 | 100% |
| 129 |  | 学生用户的顶层用例图顶层(交叉修改） | 3h | 2018-12-18 18:00 A | 2018-12-18 21:00 A | 125 | 100% |
| 130 |  | 案例拥有者用户的顶层用例图顶层(交叉修改） | 3h | 2018-12-18 18:00 A | 2018-12-18 21:00 A | 126 | 100% |
| 131 |  | 整合需求规格说明书 | 3h | 2018-12-19 14:00 A | 2018-12-19 17:00 A | 130, 129, 128, 127, 115, 116, 117, 118 | 100% |
| 132 |  | 需求规格说明书v0.1.1 | 3h | 2018-12-25 17:00 A | 2018-12-25 20:00 A | 131 | 100% |
| 133 | 3.3.3 | **需求规格说明书v0.2.0** | 5h | 2018-12-27 14:00 A | 2018-12-27 19:00 A |  | 100% |
| 134 |  | 学生用例修改 | 5h | 2018-12-27 14:00 A | 2018-12-27 19:00 A | 132 | 100% |
| 135 |  | 教师用例修改 | 5h | 2018-12-27 14:00 A | 2018-12-27 19:00 A | 132 | 100% |
| 136 |  | 管理员用例修改 | 5h | 2018-12-27 14:00 A | 2018-12-27 19:00 A | 132 | 100% |
| 137 |  | 案例拥有者用例修改 | 5h | 2018-12-27 14:00 A | 2018-12-27 19:00 A | 132 | 100% |
| 138 | 3.3.4 | **需求规格说明书v0.2.1** | 4d | 2018-12-30 14:00 A | 2018-12-30 20:00 A |  | 100% |
| 139 |  | 学生用例修改 | 6h | 2018-12-30 14:00 A | 2018-12-30 20:00 A | 134, 148 | 100% |
| 140 |  | 教师用例修改 | 6h | 2018-12-30 14:00 A | 2018-12-30 20:00 A | 135, 149 | 100% |

| ID | WBS | Task | Duration | Start | Finish | Predecessors | Complete |
| --- | --- | --- | --- | --- | --- | --- | --- |
| 141 |  | 管理员用例修改 | 6h | 2018-12-30 14:00 A | 2018-12-30 20:00 A | 136, 150 | 100% |
| 142 |  | 案例拥有者用例修改 | 6h | 2018-12-30 14:00 A | 2018-12-30 20:00 A | 137, 151 | 100% |
| 143 | 3.3.5 | **需求规格说明书v0.2.2** | 2h | 2018-12-31 14:00 A | 2018-12-31 16:00 |  | 100% |
| 144 |  | 修改业务级数字字典 | 2h | 2018-12-31 14:00 A | 2018-12-31 16:00 A | 138, 108 | 100% |
| 145 |  | E-R图 | 2h | 2018-12-31 20:00 A | 2019-01-01 21:00 A | 144 | 100% |
| 146 |  | 增加时序图 | 1d | 2018-12-31 14:00 A | 2018-12-31 15:00 A | 138 | 100% |
| 147 | 3.3.6 | **需求规格说明书v0.2.3** | 5h | 2018-12-27 14:00 A | 2018-12-27 19:00 A |  | 100% |
| 148 |  | 学生用例修改 | 5h | 2018-12-27 14:00 A | 2018-12-27 19:00 A | 132 | 100% |
| 149 |  | 教师用例修改 | 5h | 2018-12-27 14:00 A | 2018-12-27 19:00 A | 132 | 100% |
| 150 |  | 管理员用例修改 | 5h | 2018-12-27 14:00 A | 2018-12-27 19:00 A | 132 | 100% |
| 151 |  | 案例拥有者用例修改 | 5h | 2018-12-27 14:00 A | 2018-12-27 19:00 A | 132 | 100% |
| 152 | 3.4 | **需求管理** | 10h | 2018-10-21 20:00 A | 2018-10-27 18:00 |  | 100% |
| 153 |  | 配置管理规范文档 | 2h | 2018-10-21 20:00 A | 2018-10-22 21:00 A | 238 | 100% |
| 154 |  | 配置管理规范文档更新 | 1h | 2018-11-22 20:00 A | 2018-11-22 21:00 A | 153 | 100% |
| 155 |  | 文档编写规范 | 1d | 2018-10-22 20:00 A | 2018-10-22 21:00 A | 238 | 100% |
| 156 | 3.4.4 | **用户群分类** | 64h | 2018-12-07 20:00 | 2019-01-09 21:00 A |  | 100% |
| 157 |  | 用户群分类v0.1.0 | 1h | 2019-01-07 20:00 A | 2019-01-07 21:00 A | 131 | 100% |
| 158 |  | 用户群分类v0.1.1 | 1h | 2019-01-09 20:00 A | 2019-01-09 21:00 A | 157 | 100% |
| 159 | 3.4.5 | **CCB章程** | 81h | 2018-10-07 20:00 | 2018-11-21 21:00 |  | 100% |
| 160 | 3.4.5.1 | **CCB章程v0.1.0** | 1d | 2018-10-07 20:00 | 2018-10-07 21:00 |  | 100% |
| 161 |  | 建立变更控制流程 | 1h | 2019-01-09 20:00 A | 2019-01-09 21:00 A | 167 | 100% |
| 162 |  | CCB章程v0.1.1 | 1d | 2019-01-12 20:00 A | 2019-01-12 21:00 A | 160 | 100% |
| 163 |  | 变更申请书 | 2h | 2019-01-06 20:00 A | 2019-01-07 21:00 A | 147 | 100% |
| 164 | 3.4.7 | **分析变更影响** | 5h | 2019-01-07 17:00 | 2019-01-08 21:00 A |  | 100% |
| 165 |  | 变更影响分析报告 | 1d | 2019-01-07 20:00 A | 2019-01-07 21:00 A | 160 | 100% |
| 166 |  | 问题检查表 | 1h | 2019-01-08 20:00 A | 2019-01-08 21:00 A | 160 | 100% |
| 167 |  | 建立基线，管理需求版本 | 2h | 2019-01-09 20:00 A | 2019-01-10 21:00 A | 259 | 100% |
| 168 |  | 维护需求变更记录 | 2h | 2019-01-09 20:00 A | 2019-01-10 21:00 A | 164, 259, 163 | 100% |
| 169 |  | 维护需求可跟踪矩阵 | 3h | 2019-01-08 17:00 A | 2019-01-08 20:00 A | 164 | 100% |
| 170 | 3.5 | **UML翻转PPT** | 135h | 2018-10-11 20:00 A | 2018-12-16 12:00 |  | 100% |
| 171 |  | 第一次翻转 | 6h | 2018-10-11 20:00 A | 2018-10-13 18:00 A | 235SS | 100% |
| 172 |  | 第一次翻转修改 | 1h | 2018-10-19 20:00 A | 2018-10-19 21:00 A | 171 | 100% |
| 173 |  | 第二次翻转 | 6h | 2018-10-18 20:00 A | 2018-10-20 18:00 A | 237SS | 100% |
| 174 |  | 第二次翻转修改 | 1h | 2018-10-26 10:00 A | 2018-10-26 11:00 A | 173 | 100% |
| 175 |  | 第三次翻转 | 3h | 2018-10-25 08:00 A | 2018-10-25 11:00 A | 239SS | 100% |
| 176 |  | 第三次翻转修改 | 1h | 2018-11-01 20:00 A | 2018-11-01 21:00 A | 175 | 100% |
| 177 |  | 第四次翻转 | 6h | 2018-11-01 08:00 A | 2018-11-01 14:00 A | 243SS | 100% |
| 178 |  | 第四次翻转修改 | 2h | 2018-11-03 08:00 A | 2018-11-03 10:00 A | 177 | 100% |
| 179 |  | 第五次翻转 | 6h | 2018-12-06 08:00 A | 2018-12-06 14:00 A | 178 | 100% |
| 180 |  | 第五次翻转修改 | 2h | 2018-12-16 08:00 A | 2018-12-16 10:00 A | 179 | 100% |
| 181 |  | 第六次翻转 | 6h | 2018-12-13 14:00 A | 2018-12-13 20:00 A | 172, 174, 176, 178 | 100% |
| 182 |  | 第六次翻转修改 | 2h | 2018-12-16 08:00 A | 2018-12-16 10:00 A | 181 | 100% |
| 183 | 3.6 | **项目管理** | 201d | 2018-09-27 17:00 | 2019-01-14 21:00 A |  | 100% |
| 184 | 3.6.1 | **项目章程** | 4h | 2018-09-27 17:00 | 2018-09-27 21:00 |  | 100% |
| 185 |  | 项目章程v0.1.0 | 1d | 2018-10-15 17:00 A | 2018-10-15 18:00 A |  | 100% |
| 186 |  | 项目章程v0.1.1 | 1d | 2018-11-03 20:00 A | 2018-11-03 21:00 A | 185 | 100% |
| 187 |  | 项目章程v0.1.2 | 1h | 2018-11-15 20:00 A | 2018-11-15 21:00 A | 186 | 100% |
| 188 |  | 项目章程v0.2.0 | 1h | 2018-11-25 14:00 A | 2018-11-25 15:00 A | 187 | 100% |
| 189 | 3.6.2 | **项目总体计划** | 105d | 2018-10-19 08:00 A | 2018-12-14 21:00 A |  | 100% |
| 190 |  | 项目总体计划v0.0.1 | 1d | 2018-10-19 08:00 A | 2018-10-19 09:00 A | 237, 185 | 100% |
| 191 |  | 项目总体计划v0.1.0 | 1d | 2018-10-20 14:00 A | 2018-10-20 15:00 A | 190 | 100% |
| 192 |  | 项目总体计划v0.1.1 | 1d | 2018-10-26 20:00 A | 2018-10-26 21:00 A | 191 | 100% |
| 193 |  | 项目总体计划v0.1.2 | 1d | 2018-11-03 14:00 A | 2018-11-03 15:00 A | 192 | 100% |
| 194 |  | 项目总体计划v0.1.3 | 1d | 2018-11-15 15:00 A | 2018-11-15 16:00 A | 193 | 100% |
| 195 |  | 项目总体计划v0.1.4 | 1d | 2018-12-14 20:00 A | 2018-12-14 21:00 A | 194 | 100% |
| 196 | 3.6.3 | **可行性分析报告** | 85d | 2018-10-13 15:00 A | 2018-11-25 21:00 A |  | 100% |
| 197 |  | 可行性分析报告v0.1.0 | 1d | 2018-10-13 15:00 A | 2018-10-13 16:00 A |  | 100% |
| 198 |  | 可行性分析报告v0.1.1 | 1d | 2018-11-20 14:00 A | 2018-11-20 15:00 A | 197 | 100% |
| 199 |  | 可行性分析报告v0.2.0 | 1d | 2018-10-20 15:00 A | 2018-10-20 16:00 A | 198 | 100% |
| 200 |  | 可行性分析报告v0.2.1 | 1d | 2018-10-26 20:00 A | 2018-10-26 21:00 A | 199 | 100% |
| 201 |  | 可行性分析报告v0.2.2 | 1d | 2018-11-03 14:00 A | 2018-11-03 15:00 A | 200 | 100% |
| 202 |  | 可行性分析报告v0.2.3 | 1d | 2018-11-15 15:00 A | 2018-11-15 16:00 A | 201 | 100% |
| 203 |  | 可行性分析报告v0.3.1 | 1h | 2018-11-25 20:00 A | 2018-11-25 21:00 A | 202 | 100% |
| 204 | 3.6.4 | **质量保证计划** | 38d | 2018-10-26 20:00 A | 2018-11-15 15:00 A |  | 100% |
| 205 |  | 质量保证计划v0.1.0 | 1d | 2018-10-26 20:00 A | 2018-10-26 21:00 A |  | 100% |
| 206 |  | 质量保证计划v0.1.1 | 1d | 2018-11-03 20:00 A | 2018-11-03 21:00 A | 205 | 100% |
| 207 |  | 质量保证计划v0.1.2 | 1d | 2018-11-15 14:00 A | 2018-11-15 15:00 A | 206 | 100% |
| 208 |  | 系统设计与实现计划 | 5h | 2018-12-29 20:00 A | 2018-12-30 18:00 A | 131 | 100% |
| 209 |  | 软件概要设计说明 | 5h | 2019-01-13 14:00 A | 2019-01-14 21:00 A | 208 | 100% |
| 210 |  | 测试计划 | 2h | 2019-01-08 20:00 A | 2019-01-09 21:00 A | 209 | 100% |

| ID | WBS | Task | Duration | Start | Finish | Predecessors | Complete |
| --- | --- | --- | --- | --- | --- | --- | --- |
| 211 |  | 安装部署计划 | 5h | 2019-01-05 20:00 A | 2019-01-06 18:00 A | 209 | 100% |
| 212 |  | 培训计划 | 5h | 2019-01-04 20:00 A | 2019-01-05 18:00 A | 209 | 100% |
| 213 |  | 系统维护计划 | 5h | 2018-12-28 20:00 A | 2018-12-29 18:00 A | 209 | 100% |
| 214 |  | 项目总结报告 | 3h | 2019-01-13 14:00 A | 2019-01-13 17:00 A | 213 | 100% |
| 215 | 3.7 | **访谈** | 14h | 2018-10-18 17:00 | 2018-10-22 21:00 |  | 100% |
| 216 |  | 确定项目选题 | 1h | 2018-09-26 20:00 A | 2018-09-26 21:00 A | 1 | 100% |
| 217 |  | 找杨老师(以项目下达者身份获取需求)访谈 | 1d | 2018-10-18 17:00 A | 2018-10-18 18:00 A | 216 | 100% |
| 218 |  | 找杨老师访谈（以教师用户身份获取需求） | 1h | 2018-10-30 16:30 A | 2018-10-30 17:30 A | 217, 61 | 100% |
| 219 |  | 找杨老师访谈（确认范围于需求） | 1.5h | 2018-11-13 17:00 A | 2018-11-13 18:30 A | 218 | 100% |
| 220 |  | 找杨老师访谈（确认范围于需求） | 1h | 2018-12-06 20:00 A | 2018-12-06 21:00 A | 219 | 100% |
| 221 |  | 学生用例确认 | 2h | 2018-12-09 20:00 A | 2018-12-10 21:00 A | 63 | 100% |
| 222 |  | 管理员（课堂）确认 | 1h | 2018-12-16 20:00 A | 2018-12-16 21:00 A | 63 | 100% |
| 223 |  | 教师确认(杨枨）第一次 | 1h | 2018-12-17 20:00 A | 2018-12-17 21:00 A | 63 | 100% |
| 224 |  | 教师确认(杨枨）第二次-风格 | 1h | 2018-12-19 14:00 A | 2018-12-19 15:00 A | 223 | 100% |
| 225 |  | 管理员（陈尚辉学长）二次确认 | 1h | 2018-12-20 20:00 A | 2018-12-20 21:00 A | 222 | 100% |
| 226 |  | 指导者第四次确认&案例拥有者 | 1h | 2018-12-26 20:00 A | 2018-12-26 21:00 A | 224 | 100% |
| 227 |  | 管理员（陈尚辉学长）最终确认 | 1h | 2018-12-27 20:00 A | 2018-12-27 21:00 A | 225 | 100% |
| 228 |  | 举行并引导需求获取研讨会（JAD） | 1h | 2019-01-03 14:00 A | 2019-01-03 15:00 A | 219, 227, 226, 225, 224, 223, 222, 221, 220 | 100% |
| 229 | 4 | **项目控制** | 218d? | 2018-09-20 20:00 A | 2019-01-18 21:00 A |  | 100% |
| 230 | 4.1 | **小组会议** | 33h | 2018-09-20 20:00 A | 2018-10-08 21:00 |  | 100% |
| 231 |  | 第一次小组会议 | 1h | 2018-09-20 20:00 A | 2018-09-20 21:00 A | 2 | 100% |
| 232 |  | 第二次小组会议 | 1d | 2018-09-27 20:00 A | 2018-09-27 21:00 A | 4 | 100% |
| 233 |  | 第三次小组例会 | 1h | 2018-09-20 20:00 A | 2018-09-20 21:00 A | 232 | 100% |
| 234 |  | 第四次小组例会 | 1h | 2018-10-05 20:00 A | 2018-10-05 21:00 A | 233 | 100% |
| 235 |  | 第五次小组例会 | 1d | 2018-10-10 20:00 A | 2018-10-10 21:00 A | 234 | 100% |
| 236 |  | 第六次小组例会 | 1d | 2018-10-11 20:00 A | 2018-10-11 21:00 A | 235 | 100% |
| 237 |  | 第七次小组例会 | 1h | 2018-10-17 20:00 A | 2018-10-17 21:00 A | 236 | 100% |
| 238 |  | 第八次小组例会 | 1h | 2018-10-18 20:00 A | 2018-10-18 21:00 A | 173FF | 100% |
| 239 |  | 第九次小组例会 | 1h | 2018-10-25 20:00 A | 2018-10-25 21:00 A | 238 | 100% |
| 240 |  | 第九次小组例会修改 | 1h | 2018-11-03 11:00 A | 2018-11-03 12:00 A | 239 | 100% |
| 241 |  | 小组学习会 | 5h | 2018-11-02 08:00 A | 2018-11-02 13:00 A | 240 | 100% |
| 242 |  | 第十次小组例会 | 1h | 2018-10-31 21:30 A | 2018-10-31 22:30 A | 175FF | 100% |
| 243 |  | 第十一次小组例会 | 1h | 2018-11-08 20:00 A | 2018-11-08 21:00 A | 242 | 100% |
| 244 |  | 小组学习会(1) | 7h | 2018-11-10 08:00 A | 2018-11-10 15:00 A | 243 | 100% |
| 245 |  | 第十二次小组例会 | 1h | 2018-11-14 20:00 A | 2018-11-14 21:00 A | 244 | 100% |
| 246 |  | 小组学习会(2) | 7h | 2018-11-17 08:00 A | 2018-11-17 15:00 A | 245 | 100% |
| 247 |  | 第十三次小组例会 | 1h | 2018-11-21 20:00 A | 2018-11-21 21:00 A | 246 | 100% |
| 248 |  | 第十四次小组例会 | 1h | 2018-11-29 20:00 A | 2018-11-29 21:00 A | 247 | 100% |
| 249 |  | 小组学习会(3) | 4h | 2018-11-30 14:00 A | 2018-11-30 18:00 A | 248 | 100% |
| 250 |  | 第十五次小组例会 | 1h | 2018-12-05 20:00 A | 2018-12-05 21:00 A | 248 | 100% |
| 251 |  | 第十六次小组例会(紧急） | 1h | 2018-12-07 20:00 A | 2018-12-07 21:00 A | 250 | 100% |
| 252 |  | 第十七次小组例会(紧急） | 1h | 2018-12-10 20:00 A | 2018-12-10 21:00 A | 251 | 100% |
| 253 |  | 第十八次小组例会 | 1h | 2018-12-13 20:00 A | 2018-12-13 21:00 A | 252 | 100% |
| 254 |  | 第十九次小组例会 | 1h | 2018-12-20 20:00 A | 2018-12-20 21:00 A | 253 | 100% |
| 255 |  | 第二十次小组例会(紧急） | 1h | 2018-12-24 20:00 A | 2018-12-24 21:00 A | 254 | 100% |
| 256 |  | 第二十一次小组例会(紧急） | 1h | 2019-01-02 20:00 A | 2019-01-02 21:00 A | 255 | 100% |
| 257 |  | 第二十二次小组例会 | 1h | 2019-01-03 20:00 A | 2019-01-03 21:00 A | 256 | 100% |
| 258 |  | 第二十三次小组例会(紧急） | 1h | 2019-01-04 14:00 A | 2019-01-04 15:00 A | 257 | 100% |
| 259 |  | 第二十四次小组例会(紧急） | 1h | 2019-01-09 21:00 A | 2019-01-10 21:00 A | 258 | 100% |
| 260 | 4.2 | **小组团建** | 187d | 2018-10-07 17:00 A | 2019-01-18 21:00 A |  | 100% |
| 261 |  | 第一次team building | 3d | 2018-10-07 17:00 A | 2018-10-07 20:00 A | 233, 234 | 100% |
| 262 |  | 第二次team building | 3h | 2018-12-19 04:00 A | 2018-12-19 07:00 A | 273 | 100% |
| 263 |  | 第三次team building | 3h | 2018-12-27 17:00 A | 2018-12-27 20:00 A | 273 | 100% |
| 264 |  | team building(评审结束后） | 3h | 2019-01-18 18:00 A | 2019-01-18 21:00 A | 280 | 100% |
| 265 | 4.3 | **小组评审** | 112h? | 2018-11-21 09:00 | 2019-01-09 10:00 |  | 100% |
| 266 |  | 需求工程计划评审-自查 | 4h | 2018-11-17 08:00 A | 2018-11-17 10:00 | 35 | 100% |
| 267 |  | 需求工程计划评审 | 2h | 2018-11-21 09:00 A | 2018-11-21 11:00 A | 266 | 100% |
| 268 |  | 项目计划评审-修改 | 2h | 2018-11-22 14:00 A | 2018-11-22 16:00 A | 267 | 100% |
| 269 |  | SRS组内评审 | 3h | 2019-01-08 19:00 A | 2019-01-09 21:00 A | 147 | 100% |
| 270 |  | SRS评审 | 2h | 2019-01-11 15:00 A | 2019-01-11 17:00 A | 269 | 100% |
| 271 |  | 需求工程项目收尾自评 | 3h | 2019-01-14 17:00 A | 2019-01-14 20:00 A | 273, 274, 275, 276 | 100% |
| 272 | 5 | **项目收尾** | 25h? | 2019-01-10 08:00 | 2019-01-16 21:00 |  | 77% |
| 273 |  | 整理其他文档 | 7h | 2019-01-14 09:00 A | 2019-01-14 16:00 A | 153, 155, 169 | 100% |
| 274 |  | 整理需求规格说明 | 8h | 2019-01-14 09:00 A | 2019-01-14 17:00 A | 273 | 100% |
| 275 |  | 整理愿景和范围文档 | 7h | 2019-01-14 09:00 A | 2019-01-14 16:00 A | 273 | 100% |
| 276 |  | 整理界面原型 | 7h | 2019-01-14 09:00 A | 2019-01-14 16:00 A | 273 | 100% |
| 277 |  | 最终评审PPT制作 | 8h | 2019-01-14 09:00 A | 2019-01-14 17:00 A | 273 | 100% |
| 278 |  | 最终评审 | 2h | 2019-01-16 12:00 | 2019-01-16 14:00 | 273, 274, 275, 276, 277, 262, 263, 271 |  |
| 279 |  | 修改文档 | 8h | 2019-01-17 17:00 | 2019-01-19 17:00 | 278 |  |
| 280 |  | 移交正式文档 | 1h | 2019-01-17 20:00 | 2019-01-17 21:00 | 279 |  |

## Version 2 (saved 2019-01-22)

Note of the change: Update PRD2018-G04-甘特图.mpp

Last finish 2019-01-19 → 2019-01-22 (+3d). Complete tasks 231 → 234.

Changed:

| ID | Task | Start | Finish | Complete |
| --- | --- | --- | --- | --- |
| 272 | **项目收尾** |  |  | 77% → 100% |
| 273 | 整理其他文档 | 2019-01-14 09:00 A → 2019-01-14 15:00 A | 2019-01-14 16:00 A → 2019-01-15 21:00 A (+1d) |  |
| 274 | 整理需求规格说明 | 2019-01-14 09:00 A → 2019-01-14 14:00 A | 2019-01-14 17:00 A → 2019-01-15 21:00 A (+1d) |  |
| 275 | 整理愿景和范围文档 | 2019-01-14 09:00 A → 2019-01-14 15:00 A | 2019-01-14 16:00 A → 2019-01-15 21:00 A (+1d) |  |
| 276 | 整理界面原型 | 2019-01-14 09:00 A → 2019-01-14 15:00 A | 2019-01-14 16:00 A → 2019-01-15 21:00 A (+1d) |  |
| 277 | 最终评审PPT制作 | 2019-01-14 09:00 A → 2019-01-14 14:00 A | 2019-01-14 17:00 A → 2019-01-15 21:00 A (+1d) |  |
| 278 | 最终评审 | 2019-01-16 12:00 A | 2019-01-16 14:00 A | 0% → 100% |
| 279 | 修改文档 | 2019-01-17 17:00 A | 2019-01-19 17:00 A | 0% → 100% |
| 280 | 移交正式文档 | 2019-01-17 20:00 → 2019-01-22 10:00 A (+5d) | 2019-01-17 21:00 → 2019-01-22 11:00 A (+5d) | 0% → 100% |
